# City of Lyes CAFR project

Schedule from MS Project, 2020-06-30 to 2020-09-18, costs in $.

## Calendars

- Standard: Mon-Fri 08:00-12:00, 13:00-17:00; Sat-Sun off.

## Resources

| Resource | Rate | Cost per use |
| --- | --- | --- |
| Samantha (Project Manager) | 24.04 |  |
| Ashley (Supervisor) | 22.6 |  |
| Wenxi (Consultative) | 20 |  |
| Flavia (Supervisor) | 21.63 |  |
| Zhaolin (Consultative) | 20 |  |
| Plakiva Developer 3 | 22 |  |
| Plakiva Developer 4 | 22 |  |
| Plakiva Developer Lead | 74.52 |  |
| Infrastructure Lead | 76.92 |  |
| Database Admin | 65 |  |
| Business Analyst 1 | 30 |  |
| QA Analyst | 36 |  |
| Quality Assurance Lead | 45 |  |
| Finance Staff 1 | 55 |  |
| Finance Staff 2 | 45 |  |
| Plakvia Software |  |  |
| Plakvia Licenses | 8750 | 350 |
| Plakvia Training | 500 |  |
| AT&T Fiber Internet |  |  |
| Dell |  |  |
| Plakiva Developer 1 | 22 |  |
| Plakiva Developer 2 | 22 |  |
| Business Analyst 2 | 30 |  |

## Schedule

| ID | WBS | Task | Type | Duration | Start | Finish | Predecessors | Total slack | Free slack | Resources | Work | Cost |
| --- | --- | --- | --- | --- | --- | --- | --- | --- | --- | --- | --- | --- |
| 1 | 1 | **Deliverables Requirement Definition** |  | 11d | 2020-06-30 | 2020-07-14 |  | 0d |  |  | 165h | 4,494.23 |
| 2 | 1.1 | **Initiate Finance and Accounting Stakeholder Meeting** |  | 8d | 2020-06-30 | 2020-07-09 |  | 0d |  | Samantha (Project Manager) | 141h | 3,917.31 |
| 3 | 1.1.1 | Review and Finalize Business Requirements |  | 0.5w | 2020-06-30 | 2020-07-02 |  | 0d |  | Ashley (Supervisor); Zhaolin (Consultative) [25%] | 25h | 551.92 |
| 4 | 1.1.2 | Create Business Process Flowcharts |  | 4d | 2020-07-02 | 2020-07-08 | 3 | 0d |  | Ashley (Supervisor) | 32h | 723.08 |
| 5 | 1.1.3 | Review and Finalize Technical Requirements |  | 1d | 2020-07-08 | 2020-07-09 | 4 | 0d |  | Infrastructure Lead | 8h | 615.38 |
| 6 | 1.1.4 | Review and Finalize Operational Requirements |  | 1d | 2020-07-08 | 2020-07-09 | 4 | 0d |  | Ashley (Supervisor) | 8h | 180.77 |
| 7 | 1.1.5 | Review Hardware and Infrastructure Upgrades |  | 0.5d | 2020-07-09 | 2020-07-09 | 5, 6 | 0d |  | Infrastructure Lead | 4h | 307.69 |
| 8 | 1.1.6 | Deliverables Requirement Definition signoff | milestone | 0d | 2020-07-09 | 2020-07-09 | 7 | 0d |  | Samantha (Project Manager) |  |  |
| 9 | 1.2 | Initiate Plakiva Developer Meeting |  | 3d | 2020-07-10 | 2020-07-14 | 8 | 0d |  | Samantha (Project Manager) | 24h | 576.92 |
| 10 | 1.3 | Software Contract Signing | milestone | 0d | 2020-07-14 | 2020-07-14 | 9 | 0d |  | Samantha (Project Manager) |  |  |
| 11 | 2 | **Software Requirements** |  | 25.67d | 2020-07-09 | 2020-08-14 |  | 0d |  |  | 339.47h | 11,550.08 |
| 12 | 2.1 | **Finalize Mapping for Financial Statements** |  | 21.67d | 2020-07-09 | 2020-08-10 | 3, 4, 5 | 0d |  |  | 212.67h | 5,955.19 |
| 13 | 2.1.1 | **Build account mapping for Governmental Fund financials** |  | 13.17d | 2020-07-09 | 2020-07-28 |  | 0d |  |  | 106h | 2,962.5 |
| 14 | 2.1.1.1 | Build mapping for Fund Basis Statement of Net Position |  | 2d | 2020-07-15 | 2020-07-16 | 10 | 0d |  | Flavia (Supervisor) [25%] | 4h | 86.54 |
| 15 | 2.1.1.2 | Build mapping for Fund Basis Statement of Revenues, Expenditures and Net Activities |  | 3d | 2020-07-09 | 2020-07-14 |  | 4.5d | 0d | Flavia (Supervisor) [25%]; Business Analyst 1 [50%] | 16h | 446.54 |
| 16 | 2.1.1.3 | Build mapping for Government-Wide statement of Activities |  | 2d | 2020-07-17 | 2020-07-20 | 14, 15, 20SS | 0d |  | Flavia (Supervisor) [25%]; Business Analyst 1 [50%] | 10h | 283.27 |
| 17 | 2.1.1.4 | Build mapping for Government-wide Balance Sheet |  | 3d | 2020-07-21 | 2020-07-23 | 14, 15, 16 | 0d |  | Flavia (Supervisor) [25%]; Business Analyst 1 [50%] | 16h | 446.54 |
| 18 | 2.1.1.5 | Build Reconciliation between Balance Sheet and Statement of Net Position |  | 2.67d | 2020-07-24 | 2020-07-28 | 14, 17 | 0d |  | Flavia (Supervisor) [25%]; Business Analyst 1 [75%] | 20h | 566.54 |
| 19 | 2.1.1.6 | Build Mapping for Government-wide Statement of Revenues, Expeditures, and Changes in Fund Balances |  | 2.67d | 2020-07-24 | 2020-07-28 | 14, 15, 17 | 0d |  | Flavia (Supervisor) [25%]; Business Analyst 1 [75%] | 20h | 566.54 |
| 20 | 2.1.1.7 | Build Reconciliation of the statement of Revenues, Expenditures and Changes in Fund Balances of Governmental Funds to the Statement of Activities |  | 2.67d | 2020-07-17 | 2020-07-21 | 14, 15 | 0d |  | Flavia (Supervisor) [25%]; Business Analyst 2 [75%] | 20h | 566.54 |
| 21 | 2.1.1.8 | Build account mapping for Governmental Fund financials completed | milestone | 0d | 2020-07-28 | 2020-07-28 | 18, 19, 20 | 0d |  | Samantha (Project Manager) |  |  |
| 22 | 2.1.2 | **Build account mapping for Proprietary Funds** |  | 8.5d | 2020-07-28 | 2020-08-10 |  | 0d |  |  | 106.67h | 2,992.69 |
| 23 | 2.1.2.1 | Build mapping for Fund Basis Statement of Net Position |  | 0.5d | 2020-07-28 | 2020-07-29 | 13 | 0d |  | Ashley (Supervisor) | 4h | 90.38 |
| 24 | 2.1.2.2 | Build mapping for Fund Basis Statement of Revenues, Expenses and Changes in Fund Net Position |  | 4d | 2020-07-28 | 2020-08-03 | 13 | 5.5d | 0d | Ashley (Supervisor) [25%]; Business Analyst 2 [50%] | 20h | 570.38 |
| 25 | 2.1.2.3 | Build mapping for Fund Basis Statement of Cash Flows |  | 2.67d | 2020-07-28 | 2020-07-31 | 13 | 8.83d | 0d | Ashley (Supervisor) [25%]; Business Analyst 2 [50%] | 14.67h | 410.38 |
| 26 | 2.1.2.4 | Build mapping for Enterprise-Wide Statement of Net Position |  | 4d | 2020-07-29 | 2020-08-04 | 23 | 0d |  | Ashley (Supervisor) [25%]; Business Analyst 2 [50%] | 20h | 570.38 |
| 27 | 2.1.2.5 | Build mapping for Enterprise-Wide Statement of Revenues, Expenses and Changes in Fund Net Position |  | 2d | 2020-08-03 | 2020-08-05 | 24 | 5.5d | 0d | Ashley (Supervisor) [25%]; Business Analyst 2 [75%] | 16h | 450.38 |
| 28 | 2.1.2.6 | Build mapping for Fiduciary Fund Statement of Net Position |  | 2d | 2020-08-04 | 2020-08-06 | 26 | 0d |  | Ashley (Supervisor) [25%]; Business Analyst 2 [75%] | 16h | 450.38 |
| 29 | 2.1.2.7 | Build mapping for Statement of Changes in Fiduciary Net Position |  | 2d | 2020-08-06 | 2020-08-10 | 28 | 0d |  | Ashley (Supervisor) [25%]; Business Analyst 2 [75%] | 16h | 450.38 |
| 30 | 2.1.2.8 | Build account mapping for Proprietary Funds completed | milestone | 0d | 2020-08-10 | 2020-08-10 | 25, 27, 29 | 0d |  | Samantha (Project Manager) |  |  |
| 31 | 2.1.3 | Finalize Mapping for Financial Statements completed | milestone | 0d | 2020-08-10 | 2020-08-10 | 21, 30 | 0d |  | Samantha (Project Manager) |  |  |

| ID | WBS | Task | Type | Duration | Start | Finish | Predecessors | Total slack | Free slack | Resources | Work | Cost |
| --- | --- | --- | --- | --- | --- | --- | --- | --- | --- | --- | --- | --- |
| 32 | 2.2 | **Finalize Other portions of the CAFR** |  | 4d | 2020-08-10 | 2020-08-14 |  | 0d |  |  | 94.8h | 4,298.88 |
| 33 | 2.2.1 | Build linking of accounts to the MD&A |  | 1d | 2020-08-10 | 2020-08-11 | 31 | 8.5d | 0d | Plakiva Developer Lead; Ashley (Supervisor) [25%]; Wenxi (Consultative); Business Analyst 1 [50%] | 22h | 921.35 |
| 34 | 2.2.2 | Build linking of accounts to the Notes to Financial Statements |  | 1d | 2020-08-10 | 2020-08-11 | 31 | 0d |  | Plakiva Developer Lead; Ashley (Supervisor) [25%]; Business Analyst 2 [50%] | 14h | 761.35 |
| 35 | 2.2.3 | Build Linking of accounts for required supplementary information |  | 1d | 2020-08-11 | 2020-08-12 | 31, 34 | 0d |  | Plakiva Developer Lead; Flavia (Supervisor) [25%]; Zhaolin (Consultative); Business Analyst 2 [50%] | 22h | 919.42 |
| 36 | 2.2.4 | Build Linking of accounts for supplementary information |  | 1d | 2020-08-12 | 2020-08-13 | 31, 35 | 0d |  | Plakiva Developer Lead; Flavia (Supervisor) [25%]; Zhaolin (Consultative); Business Analyst 2 [50%] | 22h | 919.42 |
| 37 | 2.2.5 | Build linking of accounts for the statistical section |  | 1d | 2020-08-13 | 2020-08-14 | 36 | 0d |  | Business Analyst 1 [50%]; Plakiva Developer Lead; Ashley (Supervisor) [25%]; Zhaolin (Consultative) [10%] | 14.8h | 777.35 |
| 38 | 2.2.6 | Finalize Other portions of the CAFR completed | milestone | 0d | 2020-08-14 | 2020-08-14 | 33, 37 | 0d |  | Samantha (Project Manager) |  |  |
| 39 | 2.3 | Gather QA Testing Requirements and plans |  | 4d | 2020-08-10 | 2020-08-14 | 13SS, 22SS, 32SS | 0d |  | QA Analyst [50%]; Quality Assurance Lead | 32h | 1,296 |
| 40 | 2.4 | Software Requirements sign-off | milestone | 0d | 2020-08-14 | 2020-08-14 | 39 | 0d |  | Samantha (Project Manager) |  |  |
| 41 | 3 | **Finalize Formatting** |  | 25.67d | 2020-07-09 | 2020-08-14 |  | 25.25d |  |  | 48h | 1,056.92 |
| 42 | 3.1 | Format MD&A |  | 1d | 2020-08-07 | 2020-08-10 | 33SS-5% | 13.25d | 0.5d | Flavia (Supervisor) [10%]; Ashley (Supervisor) [10%]; Plakiva Developer 1 | 9.6h | 211.38 |
| 43 | 3.2 | Format Notes |  | 1d | 2020-08-07 | 2020-08-10 | 34SS-5% | 13.25d | 0.5d | Flavia (Supervisor) [10%]; Ashley (Supervisor) [10%]; Plakiva Developer 1 | 9.6h | 211.38 |
| 44 | 3.3 | Format Financial Statements |  | 1d | 2020-07-09 | 2020-07-10 | 12SS | 27.67d | 2d | Flavia (Supervisor) [10%]; Ashley (Supervisor) [10%]; Plakiva Developer 2 | 9.6h | 211.38 |
| 45 | 3.4 | Format Supplementary information section |  | 1d | 2020-08-11 | 2020-08-12 | 35SS | 11.75d | 0d | Flavia (Supervisor) [10%]; Ashley (Supervisor) [10%]; Plakiva Developer 2 | 9.6h | 211.38 |
| 46 | 3.5 | Format statistical section |  | 1d | 2020-08-13 | 2020-08-14 | 37SS | 9.75d | 0d | Flavia (Supervisor) [10%]; Ashley (Supervisor) [10%]; Plakiva Developer 2 | 9.6h | 211.38 |
| 47 | 3.6 | Finalize Formatting completed | milestone | 0d | 2020-08-14 | 2020-08-14 | 42, 43, 44, 45, 46 | 23.5d |  | Samantha (Project Manager) |  |  |
| 48 | 4 | **Hardware and Infrastructure** |  | 37.17d | 2020-07-10 | 2020-09-01 |  | 5.17d |  |  | 100h | 266,162.15 |
| 49 | 4.1 | Fiber Internect Connectivity |  | 15d | 2020-07-10 | 2020-08-06 | 7 | 5.17d | 0d | Infrastructure Lead [15%]; AT&T Fiber Internet [0.1%] | 18h | 16,384.62 |
| 50 | 4.2 | Setup New Laptop with VPN Connections |  | 8d | 2020-08-07 | 2020-08-18 | 49 | 22.42d |  | Infrastructure Lead [25%]; Dell [0.1%] | 16h | 26,230.77 |
| 51 | 4.3 | Create Dev and Test Sandboxes |  | 1d | 2020-08-14 | 2020-08-17 | 11, 49 | 0d |  | Infrastructure Lead | 8h | 615.38 |
| 52 | 4.4 | Support Dev and Test Sandboxes |  | 4d | 2020-08-17 | 2020-08-21 | 51 | 0d |  | Infrastructure Lead [50%] | 16h | 1,230.77 |
| 53 | 4.5 | Deployment of Software to Production System |  | 2d | 2020-08-21 | 2020-08-25 | 52 | 13.25d | 0d | Infrastructure Lead [50%]; Plakiva Developer 4; Plakvia Licenses [2500%] | 16h | 219,891.38 |
| 54 | 4.6 | Provide Database and Infrastructure Support |  | 5d | 2020-08-25 | 2020-09-01 | 53 | 13.25d |  | Infrastructure Lead [25%]; Database Admin [50%] | 26h | 1,809.23 |
| 55 | 5 | **Software Customization** |  | 23.67d | 2020-07-14 | 2020-08-17 |  | 24.25d |  |  | 284.8h | 7,806.03 |
| 56 | 5.1 | **Finalize Mapping for Financial Statements** |  | 20.67d | 2020-07-14 | 2020-08-12 |  | 7d | 3d |  | 240.8h | 6,627.95 |
| 57 | 5.1.1 | **Build account mapping for Governmental Fund financials** |  | 11.17d | 2020-07-14 | 2020-07-29 |  | 16.5d |  |  | 129.6h | 3,436.57 |
| 58 | 5.1.1.1 | Build Fund Basis Statement of Net Position |  | 2d | 2020-07-17 | 2020-07-20 | 14, 44 | 23.17d | 6.67d | Plakiva Developer Lead [10%]; Plakiva Developer 3; QA Analyst [10%] | 19.2h | 528.83 |
| 59 | 5.1.1.2 | Build Fund Basis Statement of Revenues, Expenditures and Net Activities |  | 2d | 2020-07-14 | 2020-07-16 | 15, 44 | 25.67d | 9.17d | Plakiva Developer Lead [10%]; Plakiva Developer 3; QA Analyst [10%] | 19.2h | 528.83 |
| 60 | 5.1.1.3 | Build Government-Wide statement of Activities |  | 2d | 2020-07-21 | 2020-07-22 | 16, 44 | 21.17d | 4.67d | Plakiva Developer Lead [10%]; Plakiva Developer 3; QA Analyst [10%] | 19.2h | 528.83 |
| 61 | 5.1.1.4 | Build Government-wide Balance Sheet |  | 2d | 2020-07-24 | 2020-07-27 | 17, 44 | 18.17d | 1.67d | Plakiva Developer Lead [10%]; Plakiva Developer 3; QA Analyst [10%] | 19.2h | 528.83 |
| 62 | 5.1.1.5 | Build Reconciliation between Balance Sheet and Statement of Net Position |  | 1d | 2020-07-28 | 2020-07-29 | 18, 44 | 16.5d | 0d | Plakiva Developer Lead [10%]; Plakiva Developer 3; Plakiva Developer 4; QA Analyst [10%] | 17.6h | 440.42 |
| 63 | 5.1.1.6 | Build Government-wide Statement of Revenues, Expeditures, and Changes in Fund Balances |  | 1d | 2020-07-28 | 2020-07-29 | 19, 44 | 16.5d | 0d | Plakiva Developer Lead [10%]; Plakiva Developer 3; Plakiva Developer 4; QA Analyst [10%] | 17.6h | 440.42 |
| 64 | 5.1.1.7 | Build Reconciliation of the statement of Revenues, Expenditures and Changes in Fund Balances of Governmental Funds to the Statement of Activities |  | 1d | 2020-07-21 | 2020-07-22 | 20, 44 | 21.5d | 5d | Plakiva Developer Lead [10%]; Plakiva Developer 3; Plakiva Developer 4; QA Analyst [10%] | 17.6h | 440.42 |
| 65 | 5.1.1.8 | Build account mapping for Governmental Fund financials completed | milestone | 0d | 2020-07-29 | 2020-07-29 | 58, 59, 60, 61, 62, 63, 64 | 11.5d | 9.5d | Samantha (Project Manager) |  |  |

| ID | WBS | Task | Type | Duration | Start | Finish | Predecessors | Total slack | Free slack | Constraint | Resources | Work | Cost |
| --- | --- | --- | --- | --- | --- | --- | --- | --- | --- | --- | --- | --- | --- |
| 66 | 5.1.2 | **Build account mapping for Proprietary Funds** |  | 10d | 2020-07-29 | 2020-08-12 |  | 7d |  |  |  | 111.2h | 3,191.38 |
| 67 | 5.1.2.1 | Build Fund Basis Statement of Net Position |  | 2d | 2020-07-29 | 2020-07-31 | 23, 44 | 15d | 8d |  | Plakiva Developer Lead [10%]; Database Admin [10%]; Plakiva Developer 1 | 19.2h | 575.23 |
| 68 | 5.1.2.2 | Build Fund Basis Statement of Revenues, Expenses and Changes in Fund Net Position |  | 2d | 2020-08-03 | 2020-08-05 | 24, 44 | 11.5d | 4.5d |  | Plakiva Developer Lead [10%]; Database Admin [10%]; Plakiva Developer 1 | 19.2h | 575.23 |
| 69 | 5.1.2.3 | Build Fund Basis Statement of Cash Flows |  | 1d | 2020-07-31 | 2020-08-03 | 25, 44 | 13.83d | 6.83d |  | Plakiva Developer Lead [10%]; Database Admin [10%]; Plakiva Developer 1 | 9.6h | 287.62 |
| 70 | 5.1.2.4 | Build Enterprise-Wide Statement of Net Position |  | 2d | 2020-08-04 | 2020-08-06 | 26, 44 | 11d | 4d |  | Plakiva Developer Lead [10%]; Database Admin [10%]; Plakiva Developer 1 | 19.2h | 575.23 |
| 71 | 5.1.2.5 | Build Enterprise-Wide Statement of Revenues, Expenses and Changes in Fund Net Position |  | 1d | 2020-08-05 | 2020-08-06 | 27, 44 | 10.5d | 3.5d |  | Plakiva Developer Lead [10%]; Plakiva Developer 4 | 8.8h | 235.62 |
| 72 | 5.1.2.6 | Build Fiduciary Fund Statement of Net Position |  | 2d | 2020-08-06 | 2020-08-10 | 28, 44 | 9d | 2d |  | Plakiva Developer Lead [10%]; Plakiva Developer 4 | 17.6h | 471.23 |
| 73 | 5.1.2.7 | Build Statement of Changes in Fiduciary Net Position |  | 2d | 2020-08-10 | 2020-08-12 | 29, 44 | 7d | 0d |  | Plakiva Developer Lead [10%]; Plakiva Developer 4 | 17.6h | 471.23 |
| 74 | 5.1.2.8 | Build account mapping for Proprietary Funds completed | milestone | 0d | 2020-08-12 | 2020-08-12 | 67, 68, 69, 70, 71, 72, 73 | 7d | 0d |  | Plakiva Developer Lead [10%]; Plakiva Developer 4 |  |  |
| 75 | 5.1.3 | Finalize Mapping for Financial Statements completed | milestone | 0d | 2020-08-12 | 2020-08-12 | 65, 74 | 2d |  |  | Samantha (Project Manager) |  |  |
| 76 | 5.2 | **Build Miscellaneous portions of the CAFR** |  | 4d | 2020-08-11 | 2020-08-17 |  | 9.75d | 0d |  |  | 44h | 1,178.08 |
| 77 | 5.2.1 | Build linking of accounts to the MD&A |  | 1d | 2020-08-11 | 2020-08-12 | 33, 42 | 12.75d | 3d |  | Plakiva Developer Lead [10%]; Plakiva Developer 2 | 8.8h | 235.62 |
| 78 | 5.2.2 | Build linking of accounts to the Notes to Financial Statements |  | 1d | 2020-08-11 | 2020-08-12 | 34, 43 | 12.75d | 3d |  | Plakiva Developer Lead [10%]; Plakiva Developer 2 | 8.8h | 235.62 |
| 79 | 5.2.3 | Build Linking of accounts for required supplementary information |  | 1d | 2020-08-12 | 2020-08-13 | 35, 45 | 11.75d | 2d |  | Plakiva Developer Lead [10%]; Plakiva Developer 2 | 8.8h | 235.62 |
| 80 | 5.2.4 | Build Linking of accounts for supplementary information |  | 1d | 2020-08-13 | 2020-08-14 | 36, 45 | 10.75d | 1d |  | Plakiva Developer Lead [10%]; Plakiva Developer 2 | 8.8h | 235.62 |
| 81 | 5.2.5 | Build linking of accounts for the statistical section |  | 1d | 2020-08-14 | 2020-08-17 | 37, 46 | 9.75d | 0d |  | Plakiva Developer Lead [10%]; Plakiva Developer 2 | 8.8h | 235.62 |
| 82 | 5.2.6 | Build Miscellaneous portions Completed | milestone | 0d | 2020-08-17 | 2020-08-17 | 77, 78, 79, 80, 81 | 5.5d |  |  | Samantha (Project Manager) |  |  |
| 83 | 5.3 | Software customization completed | milestone | 0d | 2020-08-17 | 2020-08-17 | 56, 76 | 22.5d |  | finish no earlier than 2020-08-15 |  |  |  |
| 84 | 6 | **Data Translation** |  | 40.47d | 2020-06-30 | 2020-08-25 |  | 17.95d |  |  |  | 94.4h | 4,744.62 |
| 85 | 6.1 | Identify and Categorize CAFR Legacy Data |  | 4d | 2020-06-30 | 2020-07-03 |  | 47.67d | 30.17d |  | Business Analyst 1 | 32h | 960 |
| 86 | 6.2 | Input Legacy Data into Test Sandbox |  | 1w | 2020-08-17 | 2020-08-24 | 85, 51 | 17.5d |  |  | Finance Staff 1 [25%]; Finance Staff 2 [25%]; Database Admin | 60h | 3,600 |
| 87 | 6.3 | Deployment of Legacy Data to Production Systems |  | 0.3d | 2020-08-25 | 2020-08-25 | 53 | 16.2d |  |  | Infrastructure Lead | 2.4h | 184.62 |
| 88 | 7 | **Quality Assurance** |  | 5d | 2020-08-21 | 2020-08-28 |  | 0d |  |  |  | 71.6h | 3,133.23 |
| 89 | 7.1 | Perform system testing |  | 2d | 2020-08-21 | 2020-08-25 | 56, 39, 52 | 0d |  |  | Finance Staff 1 [25%]; Finance Staff 2 [25%]; Plakiva Developer Lead [10%]; Quality Assurance Lead; QA Analyst | 41.6h | 1,815.23 |
| 90 | 7.2 | Perform validation testing |  | 2d | 2020-08-25 | 2020-08-27 | 89 | 0d |  |  | Finance Staff 1 [25%]; Quality Assurance Lead | 20h | 940 |
| 91 | 7.3 | Perform acceptance testing |  | 1d | 2020-08-27 | 2020-08-28 | 90 | 0d |  |  | QA Analyst; Finance Staff 2 [25%] | 10h | 378 |
| 92 | 7.4 | Quality assurance testing completed | milestone | 0d | 2020-08-28 | 2020-08-28 | 91 | 0d |  |  |  |  |  |

| ID | WBS | Task | Type | Duration | Start | Finish | Predecessors | Total slack | Free slack | Resources | Work | Cost |
| --- | --- | --- | --- | --- | --- | --- | --- | --- | --- | --- | --- | --- |
| 93 | 8 | **Training** |  | 10d | 2020-08-26 | 2020-09-09 |  | 0d |  |  | 80h | 1,784.62 |
| 94 | 8.1 | **Identify Training Needs** |  | 7d | 2020-08-26 | 2020-09-04 |  | 0d |  |  | 56h | 1,242.31 |
| 95 | 8.1.1 | Identify Users |  | 2d | 2020-08-26 | 2020-08-28 | 88FS-2.5% | 0d |  | Ashley (Supervisor) | 16h | 361.54 |
| 96 | 8.1.2 | Identify software features |  | 3d | 2020-08-28 | 2020-09-02 | 76, 95 | 0d |  | Flavia (Supervisor) | 24h | 519.23 |
| 97 | 8.1.3 | Identify process workflows |  | 2d | 2020-08-28 | 2020-09-01 | 1, 76, 95 | 1d |  | Ashley (Supervisor) | 16h | 361.54 |
| 98 | 8.1.4 | Training Need Identified |  | 2d | 2020-09-02 | 2020-09-04 | 96, 97 | 0d |  |  |  |  |
| 99 | 8.2 | Develop training documentation |  | 3d | 2020-09-04 | 2020-09-09 | 94 | 6.5d | 0d | Ashley (Supervisor) | 24h | 542.31 |
| 100 | 8.3 | Develop training practice exercises |  | 2d | 2020-09-04 | 2020-09-08 | 94 | 0d |  |  |  |  |
| 101 | 8.4 | Training Completed | milestone | 0d | 2020-09-09 | 2020-09-09 | 99, 100 | 6.5d |  |  |  |  |
| 102 | 9 | **Implementation Data Validation Implement System Complete User Acceptance Post Project Review** |  | 17.25d | 2020-08-26 | 2020-09-18 |  | 0d |  |  | 28.8h | 13,890 |
| 103 | 9.1 | User Training |  | 1.5w | 2020-09-08 | 2020-09-18 | 100 | 0d |  | Plakvia Training [2500%] |  | 12,500 |
| 104 | 9.2 | Upload current fiscal year account trial balance |  | 2d | 2020-08-26 | 2020-08-28 | 88FF | 10.65d | 0d | Database Admin | 16h | 1,040 |
| 105 | 9.3 | Data Validation |  | 1.5d | 2020-08-28 | 2020-08-31 | 88, 104 | 10.65d | 0d |  |  |  |
| 106 | 9.4 | Software Distribution |  | 0.1d | 2020-08-31 | 2020-08-31 | 105 | 10.65d | 0d | Infrastructure Lead | 0.8h | 61.54 |
| 107 | 9.5 | User Acceptance |  | 1.5d | 2020-08-31 | 2020-09-02 | 106 | 10.65d | 0d |  |  |  |
| 108 | 9.6 | Post Project Review |  | 1.5d | 2020-09-02 | 2020-09-03 | 107 | 10.65d |  | Samantha (Project Manager) | 12h | 288.46 |
| 109 | 9.7 | Implementation Complete | milestone | 0d | 2020-09-18 | 2020-09-18 | 103, 108 | 0d |  |  |  |  |
