# Assignment 4_Huang

Schedule from MS Project, 2019-10-01 to 2022-04-04.

## Calendars

- Standard: Mon-Fri 08:00-12:00, 13:00-17:00; Sat-Sun off.

## Schedule

| ID | WBS | Task | Type | Duration | Start | Finish | Predecessors | Total slack | Free slack |
| --- | --- | --- | --- | --- | --- | --- | --- | --- | --- |
| 1 | 1 | **Deliverables Requirements Definition** |  | 27.75d | 2019-10-01 | 2019-11-07 |  | 0d |  |
| 2 | 1.1 | Identify Project Stakeholders |  | 1.5w | 2019-10-01 | 2019-10-10 |  | 0d |  |
| 3 | 1.2 | Gather Business Requirements |  | 1.5w | 2019-10-04 | 2019-10-16 | 2FS-5% | 0d |  |
| 4 | 1.3 | Design Business Process Flows |  | 4d | 2019-10-16 | 2019-10-22 | 3 | 0d |  |
| 5 | 1.4 | Finalize Technical Requirements |  | 1w | 2019-10-22 | 2019-10-29 | 4 | 0d |  |
| 6 | 1.5 | Create Operational Requirements |  | 2.5w | 2019-10-22 | 2019-11-07 | 4 | 597d | 0d |
| 7 | 1.6 | Identify Technical Infrastructure Needs |  | 2d | 2019-10-30 | 2019-11-01 | 5, 6FS-5% | 601.25d | 0d |
| 8 | 1.7 | All deliverables requirements sign off | milestone | 0d | 2019-11-07 | 2019-11-07 | 6 | 597d |  |
| 9 | 2 | **Software Requirements** |  | 13d | 2019-10-29 | 2019-11-15 |  | 0d |  |
| 10 | 2.1 | **Finalize Module Requirements** |  | 13d | 2019-10-29 | 2019-11-15 | 3, 4, 5 | 0d |  |
| 11 | 2.1.1 | Create Capture Student Record Requirements |  | 4d | 2019-10-29 | 2019-11-04 |  | 2d | 0d |
| 12 | 2.1.2 | Create Search & View Student Record Requirements |  | 6d | 2019-10-29 | 2019-11-06 |  | 0d |  |
| 13 | 2.1.3 | Create Updating Student Record Requirements |  | 3d | 2019-11-06 | 2019-11-11 | 12 | 14d | 0d |
| 14 | 2.1.4 | Create Taking Academic History Requirements |  | 6d | 2019-10-29 | 2019-11-06 |  | 0d |  |
| 15 | 2.1.5 | Create Submit Testing Center Orders Requirements |  | 4d | 2019-11-06 | 2019-11-12 | 11, 12, 14 | 0d |  |
| 16 | 2.1.6 | Create Check Testing Center Results Status Requirements |  | 3d | 2019-11-12 | 2019-11-15 | 15 | 7.5d | 0d |
| 17 | 2.1.7 | Module requirements sign off | milestone | 0d | 2019-11-15 | 2019-11-15 | 16 | 10d |  |
| 18 | 2.2 | Create Testing Center Data Requirements |  | 3d | 2019-11-06 | 2019-11-11 | 11, 12 | 14d | 4d |
| 19 | 2.3 | Create Testing Center System Interface Requirements |  | 7d | 2019-11-06 | 2019-11-15 | 15SS | 0d |  |
| 20 | 2.4 | Create Graphical User Interface Requirements |  | 4d | 2019-10-29 | 2019-11-04 | 10SS | 630.5d |  |
| 21 | 2.5 | Software requirments sign off | milestone | 0d | 2019-11-15 | 2019-11-15 | 19 | 621.5d |  |
| 22 | 3 | **System Design** |  | 41.5d | 2019-11-04 | 2019-12-31 |  | 0d |  |
| 23 | 3.1 | Design Capture Student Profile Components |  | 2.5w | 2019-11-04 | 2019-11-20 | 11 | 27.5d | 0d |
| 24 | 3.2 | Design Search & View Student Record Components |  | 2.5w | 2019-11-06 | 2019-11-22 | 12 | 19.5d | 0d |
| 25 | 3.3 | Design Updating Student Record |  | 5d | 2019-11-11 | 2019-11-18 | 13 | 31.5d | 16.5d |
| 26 | 3.4 | Design Taking Academic History Components |  | 1.25w | 2019-11-06 | 2019-11-14 | 14 | 33.25d | 0d |
| 27 | 3.5 | Design Submit Test Orders Components |  | 2.5w | 2019-11-15 | 2019-12-03 | 15, 19 | 0d |  |
| 28 | 3.6 | Design Check Test Results Status Components |  | 5d | 2019-11-15 | 2019-11-22 | 16, 19 | 7.5d | 0d |
| 29 | 3.7 | Design Logical Data Model |  | 2.5w | 2019-11-15 | 2019-12-03 | 10, 18 | 10d | 0d |
| 30 | 3.8 | Design Physical Data Model |  | 2w | 2019-12-03 | 2019-12-17 | 29 | 10d | 0d |
| 31 | 3.9 | Design Testing Center System Interface |  | 4w | 2019-12-03 | 2019-12-31 | 19, 27, 28 | 0d |  |
| 32 | 3.10 | System Design Completed | milestone | 0d | 2019-12-31 | 2019-12-31 | 31 | 0d |  |

| ID | WBS | Task | Type | Duration | Start | Finish | Predecessors | Total slack | Free slack |
| --- | --- | --- | --- | --- | --- | --- | --- | --- | --- |
| 33 | 4 | **Quality Assurance Testing Plans** |  | 51.5d | 2019-11-15 | 2020-01-27 |  | 22.5d |  |
| 34 | 4.1 | Gather Testing Requirements |  | 2w | 2019-11-15 | 2019-11-29 | 10 | 22.5d |  |
| 35 | 4.2 | **Develop Test Plan** |  | 9d | 2019-12-31 | 2020-01-13 | 22, 34 | 0d |  |
| 36 | 4.2.1 | Create Unit Test Plan |  | 3d | 2019-12-31 | 2020-01-03 |  | 0d |  |
| 37 | 4.2.2 | Create Integration Test Plan |  | 3d | 2020-01-03 | 2020-01-08 | 36 | 0d |  |
| 38 | 4.2.3 | Create System Test Plan |  | 3d | 2020-01-08 | 2020-01-13 | 37 | 0d |  |
| 39 | 4.2.4 | Create Load / Volume Test Plan |  | 3d | 2019-12-31 | 2020-01-03 |  | 6d |  |
| 40 | 4.2.5 | Create Validation Test Plan |  | 3d | 2019-12-31 | 2020-01-03 |  | 6d |  |
| 41 | 4.2.6 | Create Acceptance Test Plan |  | 3d | 2019-12-31 | 2020-01-03 |  | 6d |  |
| 42 | 4.2.7 | Test plan development completed | milestone | 0d | 2020-01-13 | 2020-01-13 | 38 | 0d |  |
| 43 | 4.3 | Write System Test Cases |  | 1w | 2020-01-13 | 2020-01-20 | 35 | 0d |  |
| 44 | 4.4 | Write System Test Scripts |  | 1w | 2020-01-20 | 2020-01-27 | 43 | 570d | 0d |
| 45 | 4.5 | Quality Assurance Testing Plans completed | milestone | 0d | 2020-01-27 | 2020-01-27 | 44 | 570d |  |
| 46 | 5 | **Hardware & Technical Infrastructure** |  | 526.59d | 2019-11-01 | 2021-11-09 |  | 104.66d |  |
| 47 | 5.1 | Create Development Environment |  | 1w | 2019-11-01 | 2019-11-08 | 7 | 614.75d | 0d |
| 48 | 5.2 | Create Testing Environment |  | 8d | 2019-11-08 | 2019-11-20 | 47 | 614.75d | 0d |
| 49 | 5.3 | Support Development Environment |  | 0.34d | 2019-11-08 | 2019-11-08 | 47 | 625.91d |  |
| 50 | 5.4 | Support Testing Environment |  | 3.5d | 2019-11-20 | 2019-11-25 | 48 | 614.75d |  |
| 51 | 5.5 | Support Deployment to Production Environmen |  | 0.34d | 2021-11-08 | 2021-11-09 | 105 | 104.66d | 0d |
| 52 | 5.6 | Support Database |  | 0.34d | 2019-11-08 | 2019-11-08 | 47 | 625.91d |  |
| 53 | 5.7 | Hardware & Technical Infrastructure completed | milestone | 0d | 2021-11-09 | 2021-11-09 | 51 | 104.66d |  |
| 54 | 6 | **Software Programming** |  | 51.25d | 2019-11-14 | 2020-01-24 |  | 25.75d |  |
| 55 | 6.1 | Build Capture Student Record Components |  | 13d | 2019-11-20 | 2019-12-09 | 23 | 27.5d | 8d |
| 56 | 6.2 | Build Search & View Student Record Components |  | 12d | 2019-11-22 | 2019-12-10 | 24 | 19.5d | 0d |
| 57 | 6.3 | Build Updating Student Record |  | 7d | 2019-12-10 | 2019-12-19 | 25, 56 | 19.5d | 0d |
| 58 | 6.4 | Build Taking Academic History Components |  | 6d | 2019-11-14 | 2019-11-22 | 26 | 38.75d | 19.25d |
| 59 | 6.5 | Build Submit Testing Center Orders Components |  | 5d | 2019-12-19 | 2019-12-26 | 27, 55, 56, 57, 58 | 19.5d | 17d |
| 60 | 6.6 | Build Check Testing Center Results Status Components |  | 1w | 2019-11-22 | 2019-11-29 | 28 | 39d | 36.5d |
| 61 | 6.7 | Build Logical Data Model |  | 3w | 2019-12-03 | 2019-12-24 | 29 | 594d |  |
| 62 | 6.8 | Build Physical Data Model |  | 1w | 2019-12-17 | 2019-12-24 | 30 | 594d |  |
| 63 | 6.9 | Build Testing Center System Interface |  | 18d | 2019-12-31 | 2020-01-24 | 31 | 571d | 0d |
| 64 | 6.10 | Support Development & Quality Assurance |  | 1d | 2019-12-31 | 2020-01-01 | 22 | 588d |  |
| 65 | 6.11 | Software Programming completed | milestone | 0d | 2020-01-24 | 2020-01-24 | 63 | 571d |  |

| ID | WBS | Task | Type | Duration | Start | Finish | Predecessors | Total slack | Free slack |
| --- | --- | --- | --- | --- | --- | --- | --- | --- | --- |
| 66 | 7 | **Data Conversion** |  | 45d | 2019-12-17 | 2020-02-18 |  | 554d |  |
| 67 | 7.1 | Identify Existing System Data Sources |  | 1w | 2019-12-17 | 2019-12-24 | 30 | 554d | 0d |
| 68 | 7.2 | Gather Existing System Data Model |  | 1w | 2019-12-24 | 2019-12-31 | 67 | 554d | 0d |
| 69 | 7.3 | Design Existing System Physical Data Model |  | 1.5w | 2019-12-31 | 2020-01-10 | 68 | 554d | 0d |
| 70 | 7.4 | Design Existing System Logical Data Model |  | 1.5w | 2020-01-10 | 2020-01-21 | 69 | 554d | 0d |
| 71 | 7.5 | Build Existing System Physical Model |  | 1.5w | 2020-01-21 | 2020-01-31 | 70 | 554d | 0d |
| 72 | 7.6 | Build Existing System Logical Model |  | 1.5w | 2020-01-31 | 2020-02-11 | 71 | 554d | 0d |
| 73 | 7.7 | Legacy to New System Data Mapping |  | 3d | 2020-02-11 | 2020-02-14 | 72 | 554d | 0d |
| 74 | 7.8 | Identify Data Extraction, Translation, and Transformation Requirements |  | 2d | 2020-02-14 | 2020-02-18 | 73 | 554d | 0d |
| 75 | 7.9 | Data Conversion completed | milestone | 0d | 2020-02-18 | 2020-02-18 | 74 | 554d |  |
| 76 | 8 | **Quality Assurance** |  | 470d | 2020-01-20 | 2021-11-08 |  | 0d |  |
| 77 | 8.1 | **Perform Unit Testing** |  | 5d | 2020-01-20 | 2020-01-27 |  | 0d |  |
| 78 | 8.1.1 | Test Capture Student Profile Components |  | 4d | 2020-01-20 | 2020-01-24 | 43, 55 | 1d | 0d |
| 79 | 8.1.2 | Test Search & View Student Record Components |  | 1d | 2020-01-20 | 2020-01-21 | 43, 56 | 4d | 3d |
| 80 | 8.1.3 | Test Updating Student Record |  | 1.25d | 2020-01-20 | 2020-01-21 | 43, 57 | 3.75d | 2.75d |
| 81 | 8.1.4 | Test Taking Academic History Components |  | 1w | 2020-01-20 | 2020-01-27 | 43, 58 | 0d |  |
| 82 | 8.1.5 | Test Submit Test Orders Components |  | 2.5d | 2020-01-20 | 2020-01-23 | 43, 59 | 2.5d |  |
| 83 | 8.1.6 | Test Check Test Results Status Components |  | 2.5d | 2020-01-20 | 2020-01-23 | 43, 60 | 2.5d |  |
| 84 | 8.1.7 | Unit Testing completed | milestone | 0d | 2020-01-27 | 2020-01-27 | 81 | 0d |  |
| 85 | 8.2 | **Perform Integration Testing** |  | 21d | 2020-01-24 | 2020-02-24 |  | 0d |  |
| 86 | 8.2.1 | Perform Phase 1 Testing |  | 12d | 2020-01-24 | 2020-02-11 | 78, 79, 80 | 9d |  |
| 87 | 8.2.2 | Perform Phase 2 Testing |  | 4w | 2020-01-27 | 2020-02-24 | 77 | 0d |  |
| 88 | 8.2.3 | Integration Testing completed | milestone | 0d | 2020-02-24 | 2020-02-24 | 87 | 0d |  |
| 89 | 8.3 | Perform System Testing |  | 32w | 2020-02-24 | 2020-10-05 | 85 | 0d |  |
| 90 | 8.4 | Perform Load / Volume Testing |  | 1w | 2020-10-05 | 2020-10-12 | 89 | 0d |  |
| 91 | 8.5 | Perform Validation Testing |  | 16w | 2020-10-12 | 2021-02-01 | 90 | 0d |  |
| 92 | 8.6 | Perform Acceptance Testing |  | 40w | 2021-02-01 | 2021-11-08 | 91 | 0d |  |
| 93 | 8.7 | Quality Assurance completed | milestone | 0d | 2021-11-08 | 2021-11-08 | 92 | 0d |  |

| ID | WBS | Task | Type | Duration | Start | Finish | Predecessors | Total slack | Free slack |
| --- | --- | --- | --- | --- | --- | --- | --- | --- | --- |
| 94 | 9 | **Training** |  | 22d | 2021-05-27 | 2021-06-28 |  | 190.5d |  |
| 95 | 9.1 | **Identify Training Needs** |  | 7d | 2021-05-27 | 2021-06-07 |  | 190.5d | 0d |
| 96 | 9.1.1 | Identify Users |  | 2d | 2021-05-27 | 2021-05-31 | 76FS-2.5% | 190.5d | 0d |
| 97 | 9.1.2 | Identify System Features |  | 1w | 2021-05-31 | 2021-06-07 | 22, 96 | 190.5d |  |
| 98 | 9.1.3 | Identify Workflows |  | 1w | 2021-05-31 | 2021-06-07 | 1, 22, 96 | 190.5d | 0d |
| 99 | 9.1.4 | Training Needs sign off | milestone | 0d | 2021-06-07 | 2021-06-07 | 98 | 190.5d |  |
| 100 | 9.2 | Develop Training Documentation |  | 3w | 2021-06-07 | 2021-06-28 | 95 | 200.5d |  |
| 101 | 9.3 | Develop Training Exercises |  | 3w | 2021-06-07 | 2021-06-28 | 95 | 190.5d | 0d |
| 102 | 9.4 | Training completed | milestone | 0d | 2021-06-28 | 2021-06-28 | 101 | 200.5d |  |
| 103 | 10 | **Implementation** |  | 200.5d | 2021-06-28 | 2022-04-04 |  | 0d |  |
| 104 | 10.1 | User Training |  | 2w | 2021-06-28 | 2021-07-12 | 101 | 190.5d |  |
| 105 | 10.2 | Create Production Environment |  | 1d | 2021-11-05 | 2021-11-08 | 76FF | 97d | 0d |
| 106 | 10.3 | Deploy Software to Production Environment |  | 8d | 2021-11-08 | 2021-11-18 | 105 | 97d |  |
| 107 | 10.4 | **Convert Data from Existing System** |  | 19d | 2021-11-08 | 2021-12-03 |  | 0d |  |
| 108 | 10.4.1 | Data Extraction |  | 1d | 2021-11-08 | 2021-11-09 | 76 | 0d |  |
| 109 | 10.4.2 | Data Translation / Transformation |  | 1d | 2021-11-09 | 2021-11-10 | 108 | 0d |  |
| 110 | 10.4.3 | Data Loading |  | 1d | 2021-11-10 | 2021-11-11 | 109 | 0d |  |
| 111 | 10.4.4 | Data Validation |  | 16d | 2021-11-11 | 2021-12-03 | 110 | 0d |  |
| 112 | 10.4.5 | Convert Data from Existing System completed | milestone | 0d | 2021-12-03 | 2021-12-03 | 111 | 0d |  |
| 113 | 10.5 | Implement System |  | 16d | 2021-12-03 | 2021-12-27 | 107 | 0d |  |
| 114 | 10.6 | Complete User Acceptance |  | 4w | 2021-12-27 | 2022-01-24 | 113 | 0d |  |
| 115 | 10.7 | Post Project Review |  | 10w | 2022-01-24 | 2022-04-04 | 114 | 0d |  |
| 116 | 10.8 | Implementation completed | milestone | 0d | 2022-04-04 | 2022-04-04 | 115 | 0d |  |
