# Assignment 5_Huang

Schedule from MS Project, 2019-10-01 to 2020-04-30, costs in $.

## Calendars

- Standard: Mon-Fri 08:00-12:00, 13:00-17:00; Sat-Sun off.

## Resources

| Resource | Rate |
| --- | --- |
| Amy (Analyst) | 90 |
| Banner Licenses | 1500 |
| Banner Software |  |
| Banner Training | 2500 |
| Ben (Functional Lead) | 69.71 |
| Cyle (QA Analyst) | 85 |
| Dee (Analyst) | 75 |
| Dell |  |
| Ed (Developer) | 95 |
| Fran (Developer) | 85 |
| Guy (Developer) | 100 |
| Hank (QA Analyst) | 40 |
| Ike (Quality Assurance Lead) | 80 |
| Jon (Database Administrator) | 75 |
| Kim (Analyst) | 95 |
| Lynn (Business Analysis Lead) | 69.71 |
| Mary (Infrastructure Lead) | 76.92 |
| Project Manager | 84.13 |
| Ray (Faculty User) | 55 |
| Sue (Development Lead) | 79.33 |
| Ted (Lab User) | 60 |

## Schedule

| ID | WBS | Task | Type | Duration | Start | Finish | Predecessors | Total slack | Free slack | Resources | Work | Cost |
| --- | --- | --- | --- | --- | --- | --- | --- | --- | --- | --- | --- | --- |
| 1 | 1 | **Deliverables Requirements Definition** |  | 27.75d | 2019-10-01 | 2019-11-07 |  | 0d |  |  | 308h | 26,635.77 |
| 2 | 1.1 | Identify Project Stakeholders |  | 1.5w | 2019-10-01 | 2019-10-10 |  | 0d |  | Project Manager | 60h | 5,048.08 |
| 3 | 1.2 | Gather Business Requirements |  | 1.5w | 2019-10-04 | 2019-10-16 | 2FS-5% | 0d |  | Amy (Analyst) | 60h | 5,400 |
| 4 | 1.3 | Design Business Process Flows |  | 4d | 2019-10-16 | 2019-10-22 | 3 | 0d |  | Amy (Analyst) | 32h | 2,880 |
| 5 | 1.4 | Finalize Technical Requirements |  | 1w | 2019-10-22 | 2019-10-29 | 4 | 0d |  | Mary (Infrastructure Lead) | 40h | 3,076.92 |
| 6 | 1.5 | Create Operational Requirements |  | 2.5w | 2019-10-22 | 2019-11-07 | 4 | 42.25d | 0d | Amy (Analyst) | 100h | 9,000 |
| 7 | 1.6 | Identify Technical Infrastructure Needs |  | 2d | 2019-10-30 | 2019-11-01 | 5, 6FS-5% | 42.25d | 0d | Mary (Infrastructure Lead) | 16h | 1,230.77 |
| 8 | 1.7 | All deliverables requirements sign off | milestone | 0d | 2019-11-07 | 2019-11-07 | 6 | 95d |  |  |  |  |
| 9 | 2 | **Software Requirements** |  | 13d | 2019-10-29 | 2019-11-15 |  | 0d |  |  | 292h | 23,235.58 |
| 10 | 2.1 | **Finalize Module Requirements** |  | 13d | 2019-10-29 | 2019-11-15 | 3, 4, 5 | 0d |  |  | 180h | 14,824.04 |
| 11 | 2.1.1 | Create Capture Student Record Requirements |  | 4d | 2019-10-29 | 2019-11-04 |  | 2d | 0d | Ben (Functional Lead) [75%] | 24h | 1,673.08 |
| 12 | 2.1.2 | Create Search & View Student Record Requirements |  | 6d | 2019-10-29 | 2019-11-06 |  | 0d |  | Kim (Analyst) | 48h | 4,560 |
| 13 | 2.1.3 | Create Updating Student Record Requirements |  | 3d | 2019-11-06 | 2019-11-11 | 12 | 4d | 0d | Ben (Functional Lead) [75%] | 18h | 1,254.81 |
| 14 | 2.1.4 | Create Taking Academic History Requirements |  | 6d | 2019-10-29 | 2019-11-06 |  | 0d |  | Lynn (Business Analysis Lead) | 48h | 3,346.15 |
| 15 | 2.1.5 | Create Submit Testing Center Orders Requirements |  | 4d | 2019-11-06 | 2019-11-12 | 11, 12, 14 | 0d |  | Kim (Analyst) [75%] | 24h | 2,280 |
| 16 | 2.1.6 | Create Check Testing Center Results Status Requirements |  | 3d | 2019-11-12 | 2019-11-15 | 15 | 0d |  | Kim (Analyst) [75%] | 18h | 1,710 |
| 17 | 2.1.7 | Module requirements sign off | milestone | 0d | 2019-11-15 | 2019-11-15 | 16 | 0d |  |  |  |  |
| 18 | 2.2 | Create Testing Center Data Requirements |  | 3d | 2019-11-06 | 2019-11-11 | 11, 12 | 4d |  | Lynn (Business Analysis Lead) | 24h | 1,673.08 |
| 19 | 2.3 | Create Testing Center System Interface Requirements |  | 7d | 2019-11-06 | 2019-11-15 | 15SS | 2.5d | 0d | Dee (Analyst) | 56h | 4,200 |
| 20 | 2.4 | Create Graphical User Interface Requirements |  | 4d | 2019-10-29 | 2019-11-04 | 10SS | 128.5d |  | Sue (Development Lead) | 32h | 2,538.46 |
| 21 | 2.5 | Software requirments sign off | milestone | 0d | 2019-11-15 | 2019-11-15 | 19, 10 | 119.5d |  |  |  |  |
| 22 | 3 | **System Design** |  | 31.5d | 2019-11-04 | 2019-12-17 |  | 0d |  |  | 776h | 64,659.62 |
| 23 | 3.1 | Design Capture Student Profile Components |  | 2w | 2019-11-04 | 2019-11-18 | 11 | 13d | 0d | Ben (Functional Lead) [25%]; Sue (Development Lead) | 81h | 6,415.87 |
| 24 | 3.2 | Design Search & View Student Record Components |  | 2w | 2019-11-06 | 2019-11-20 | 12 | 5d | 0d | Guy (Developer); Kim (Analyst) [25%] | 100h | 9,900 |
| 25 | 3.3 | Design Updating Student Record |  | 4d | 2019-11-11 | 2019-11-15 | 13 | 20d | 15d | Ben (Functional Lead) [25%]; Ed (Developer) | 40h | 3,597.69 |
| 26 | 3.4 | Design Taking Academic History Components |  | 1w | 2019-11-06 | 2019-11-13 | 14 | 23d | 0d | Fran (Developer); Lynn (Business Analysis Lead) [25%] | 50h | 4,097.12 |
| 27 | 3.5 | Design Submit Test Orders Components |  | 2w | 2019-11-15 | 2019-11-29 | 15, 19 | 2.5d | 0d | Fran (Developer); Kim (Analyst) [25%] | 100h | 8,700 |
| 28 | 3.6 | Design Check Test Results Status Components |  | 4d | 2019-11-15 | 2019-11-21 | 16, 19 | 8.5d | 0d | Dee (Analyst); Kim (Analyst) [25%] | 40h | 3,160 |
| 29 | 3.7 | Design Logical Data Model |  | 2.5w | 2019-11-15 | 2019-12-03 | 10, 18 | 0d |  | Jon (Database Administrator); Lynn (Business Analysis Lead) [25%] | 125h | 9,242.79 |
| 30 | 3.8 | Design Physical Data Model |  | 2w | 2019-12-03 | 2019-12-17 | 29 | 0d |  | Jon (Database Administrator) | 80h | 6,000 |
| 31 | 3.9 | Design Testing Center System Interface |  | 2w | 2019-11-29 | 2019-12-13 | 19, 27, 28 | 2.5d | 0d | Amy (Analyst); Sue (Development Lead) | 160h | 13,546.15 |
| 32 | 3.10 | System Design Completed | milestone | 0d | 2019-12-17 | 2019-12-17 | 30 | 0d |  |  |  |  |

| ID | WBS | Task | Type | Duration | Start | Finish | Predecessors | Total slack | Free slack | Resources | Work | Cost |
| --- | --- | --- | --- | --- | --- | --- | --- | --- | --- | --- | --- | --- |
| 33 | 4 | **Quality Assurance Testing Plans** |  | 41.5d | 2019-11-15 | 2020-01-13 |  | 17.5d |  |  | 304h | 18,840 |
| 34 | 4.1 | Gather Testing Requirements |  | 1w | 2019-11-15 | 2019-11-22 | 10 | 17.5d |  | Hank (QA Analyst); Ike (Quality Assurance Lead) | 80h | 4,800 |
| 35 | 4.2 | **Develop Test Plan** |  | 9d | 2019-12-17 | 2019-12-30 | 22, 34 | 0d |  |  | 144h | 9,240 |
| 36 | 4.2.1 | Create Unit Test Plan |  | 3d | 2019-12-17 | 2019-12-20 |  | 0d |  | Hank (QA Analyst) | 24h | 960 |
| 37 | 4.2.2 | Create Integration Test Plan |  | 3d | 2019-12-20 | 2019-12-25 | 36 | 0d |  | Hank (QA Analyst) | 24h | 960 |
| 38 | 4.2.3 | Create System Test Plan |  | 3d | 2019-12-25 | 2019-12-30 | 37 | 0d |  | Hank (QA Analyst) | 24h | 960 |
| 39 | 4.2.4 | Create Load / Volume Test Plan |  | 3d | 2019-12-17 | 2019-12-20 |  | 6d |  | Guy (Developer) | 24h | 2,400 |
| 40 | 4.2.5 | Create Validation Test Plan |  | 3d | 2019-12-17 | 2019-12-20 |  | 6d |  | Ike (Quality Assurance Lead) | 24h | 1,920 |
| 41 | 4.2.6 | Create Acceptance Test Plan |  | 3d | 2019-12-17 | 2019-12-20 |  | 6d |  | Cyle (QA Analyst) | 24h | 2,040 |
| 42 | 4.2.7 | Test plan development completed | milestone | 0d | 2019-12-30 | 2019-12-30 | 38 | 0d |  |  |  |  |
| 43 | 4.3 | Write System Test Cases |  | 1w | 2019-12-30 | 2020-01-06 | 35 | 0d |  | Ike (Quality Assurance Lead) | 40h | 3,200 |
| 44 | 4.4 | Write System Test Scripts |  | 1w | 2020-01-06 | 2020-01-13 | 43 | 78d | 0d | Hank (QA Analyst) | 40h | 1,600 |
| 45 | 4.5 | Quality Assurance Testing Plans completed | milestone | 0d | 2020-01-13 | 2020-01-13 | 44, 35 | 78d |  |  |  |  |
| 46 | 5 | **Hardware & Technical Infrastructure** |  | 117.75d | 2019-11-01 | 2020-04-15 |  | 11.5d |  |  | 141.6h | 385,886.15 |
| 47 | 5.1 | Create Development Environment |  | 4w | 2019-11-01 | 2019-11-29 | 7 | 42.25d | 0d | Mary (Infrastructure Lead) [25%]; Dell [0.1%]; Banner Software [0.1%] | 40h | 378,076.92 |
| 48 | 5.2 | Create Testing Environment |  | 32d | 2019-11-29 | 2020-01-14 | 47 | 42.25d | 0d | Mary (Infrastructure Lead) [25%] | 64h | 4,923.08 |
| 49 | 5.3 | Support Development Environment |  | 4d | 2019-11-29 | 2019-12-05 | 47 | 105.25d |  | Mary (Infrastructure Lead) [10%] | 3.2h | 246.15 |
| 50 | 5.4 | Support Testing Environment |  | 7w | 2020-01-14 | 2020-03-03 | 48 | 42.25d |  | Mary (Infrastructure Lead) [10%] | 28h | 2,153.85 |
| 51 | 5.5 | Support Deployment to Production Environmen |  | 4d | 2020-04-09 | 2020-04-15 | 105 | 11.5d | 0d | Mary (Infrastructure Lead) [10%] | 3.2h | 246.15 |
| 52 | 5.6 | Support Database |  | 4d | 2019-11-29 | 2019-12-05 | 47 | 105.25d |  | Jon (Database Administrator) [10%] | 3.2h | 240 |
| 53 | 5.7 | Hardware & Technical Infrastructure completed | milestone | 0d | 2020-04-15 | 2020-04-15 | 51 | 11.5d |  |  |  |  |
| 54 | 6 | **Software Programming** |  | 64.5d | 2019-11-13 | 2020-02-11 |  | 10d |  |  | 864h | 149,880 |
| 55 | 6.1 | Build Capture Student Record Components |  | 13d | 2019-11-18 | 2019-12-05 | 23 | 13d | 8d | Sue (Development Lead); Banner Software [0.1%] | 104h | 83,250 |
| 56 | 6.2 | Build Search & View Student Record Components |  | 12d | 2019-11-20 | 2019-12-06 | 24 | 5d | 0d | Guy (Developer) | 96h | 9,600 |
| 57 | 6.3 | Build Updating Student Record |  | 7d | 2019-12-06 | 2019-12-17 | 25, 56 | 5d | 0d | Ed (Developer) | 56h | 5,320 |
| 58 | 6.4 | Build Taking Academic History Components |  | 6d | 2019-11-13 | 2019-11-21 | 26 | 23d | 18d | Sue (Development Lead) | 48h | 3,807.69 |
| 59 | 6.5 | Build Submit Testing Center Orders Components |  | 2.5w | 2019-12-17 | 2020-01-02 | 27, 55, 56, 57, 58 | 5d | 2d | Guy (Developer); Fran (Developer) | 200h | 18,500 |
| 60 | 6.6 | Build Check Testing Center Results Status Components |  | 1w | 2019-11-21 | 2019-11-28 | 28 | 30.5d | 27.5d | Sue (Development Lead) | 40h | 3,173.08 |
| 61 | 6.7 | Build Logical Data Model |  | 3w | 2019-12-03 | 2019-12-24 | 29 | 92d |  | Jon (Database Administrator) | 120h | 9,000 |
| 62 | 6.8 | Build Physical Data Model |  | 1w | 2019-12-17 | 2019-12-24 | 30 | 92d |  | Jon (Database Administrator) | 40h | 3,000 |
| 63 | 6.9 | Build Testing Center System Interface |  | 9d | 2019-12-13 | 2019-12-26 | 31 | 90.5d |  | Fran (Developer); Ed (Developer) | 144h | 12,960 |
| 64 | 6.10 | Support Development & Quality Assurance |  | 8w | 2019-12-17 | 2020-02-11 | 22 | 57d | 0d | Sue (Development Lead) [5%] | 16h | 1,269.23 |
| 65 | 6.11 | Software Programming completed | milestone | 0d | 2020-02-11 | 2020-02-11 | 64 | 57d |  |  |  |  |

| ID | WBS | Task | Type | Duration | Start | Finish | Predecessors | Total slack | Free slack | Resources | Work | Cost |
| --- | --- | --- | --- | --- | --- | --- | --- | --- | --- | --- | --- | --- |
| 66 | 7 | **Data Conversion** |  | 44d | 2019-12-17 | 2020-02-17 |  | 53d |  |  | 360h | 25,138.46 |
| 67 | 7.1 | Identify Existing System Data Sources |  | 1w | 2019-12-17 | 2019-12-24 | 30 | 53d | 0d | Lynn (Business Analysis Lead) | 40h | 2,788.46 |
| 68 | 7.2 | Gather Existing System Data Model |  | 1w | 2019-12-24 | 2019-12-31 | 67 | 53d | 0d | Lynn (Business Analysis Lead) | 40h | 2,788.46 |
| 69 | 7.3 | Design Existing System Physical Data Model |  | 1.5w | 2019-12-31 | 2020-01-10 | 68 | 53d | 0d | Lynn (Business Analysis Lead) | 60h | 4,182.69 |
| 70 | 7.4 | Design Existing System Logical Data Model |  | 1.5w | 2020-01-10 | 2020-01-21 | 69 | 53d | 0d | Lynn (Business Analysis Lead) | 60h | 4,182.69 |
| 71 | 7.5 | Build Existing System Physical Model |  | 1.5w | 2020-01-21 | 2020-01-31 | 70 | 53d | 0d | Lynn (Business Analysis Lead) | 60h | 4,182.69 |
| 72 | 7.6 | Build Existing System Logical Model |  | 1.5w | 2020-01-31 | 2020-02-11 | 71 | 53d | 0d | Lynn (Business Analysis Lead) | 60h | 4,182.69 |
| 73 | 7.7 | Legacy to New System Data Mapping |  | 3d | 2020-02-11 | 2020-02-14 | 72 | 53d | 0d | Lynn (Business Analysis Lead) | 24h | 1,673.08 |
| 74 | 7.8 | Identify Data Extraction, Translation, and Transformation Requirements |  | 1d | 2020-02-14 | 2020-02-17 | 73 | 53d | 0d | Jon (Database Administrator); Lynn (Business Analysis Lead) | 16h | 1,157.69 |
| 75 | 7.9 | Data Conversion completed | milestone | 0d | 2020-02-17 | 2020-02-17 | 74 | 53d |  |  |  |  |
| 76 | 8 | **Quality Assurance** |  | 67.5d | 2020-01-06 | 2020-04-09 |  | 0d |  |  | 3804h | 289,113.46 |
| 77 | 8.1 | **Perform Unit Testing** |  | 5d | 2020-01-06 | 2020-01-13 |  | 0d |  |  | 148h | 12,010 |
| 78 | 8.1.1 | Test Capture Student Profile Components |  | 4d | 2020-01-06 | 2020-01-10 | 43, 55 | 1d |  | Fran (Developer) | 32h | 2,720 |
| 79 | 8.1.2 | Test Search & View Student Record Components |  | 4d | 2020-01-06 | 2020-01-10 | 43, 56 | 1d |  | Ray (Faculty User) [25%]; Ed (Developer) | 16h | 1,200 |
| 80 | 8.1.3 | Test Updating Student Record |  | 1w | 2020-01-06 | 2020-01-13 | 43, 57 | 0d |  | Ray (Faculty User) [25%]; Amy (Analyst) | 20h | 1,450 |
| 81 | 8.1.4 | Test Taking Academic History Components |  | 1w | 2020-01-06 | 2020-01-13 | 43, 58 | 0d |  | Ike (Quality Assurance Lead) | 40h | 3,200 |
| 82 | 8.1.5 | Test Submit Test Orders Components |  | 2d | 2020-01-06 | 2020-01-08 | 43, 59 | 3d |  | Ted (Lab User) [25%]; Guy (Developer) | 20h | 1,840 |
| 83 | 8.1.6 | Test Check Test Results Status Components |  | 2d | 2020-01-06 | 2020-01-08 | 43, 60 | 3d |  | Ted (Lab User) [25%]; Cyle (QA Analyst) | 20h | 1,600 |
| 84 | 8.1.7 | Unit Testing completed | milestone | 0d | 2020-01-13 | 2020-01-13 | 80, 81 | 0d |  |  |  |  |
| 85 | 8.2 | **Perform Integration Testing** |  | 5d | 2020-01-13 | 2020-01-20 |  | 0d |  |  | 256h | 20,751.54 |
| 86 | 8.2.1 | Perform Phase 1 Testing |  | 4d | 2020-01-13 | 2020-01-17 | 78, 79, 80 | 1d |  | Sue (Development Lead); Hank (QA Analyst); Ike (Quality Assurance Lead) | 96h | 6,378.46 |
| 87 | 8.2.2 | Perform Phase 2 Testing |  | 1w | 2020-01-13 | 2020-01-20 | 77 | 0d |  | Guy (Developer); Sue (Development Lead); Ed (Developer); Fran (Developer) | 160h | 14,373.08 |
| 88 | 8.2.3 | Integration Testing completed | milestone | 0d | 2020-01-20 | 2020-01-20 | 87 | 0d |  |  |  |  |
| 89 | 8.3 | Perform System Testing |  | 4w | 2020-01-20 | 2020-02-17 | 85 | 0d |  | Ray (Faculty User) [50%]; Sue (Development Lead); Amy (Analyst); Ted (Lab User) [50%]; Hank (QA Analyst); Ike (Quality Assurance Lead); Ed (Developer); Fran (Developer) | 1120h | 84,292.31 |
| 90 | 8.4 | Perform Load / Volume Testing |  | 0.5w | 2020-02-17 | 2020-02-20 | 89 | 0d |  | Ike (Quality Assurance Lead); Ed (Developer) | 40h | 3,500 |
| 91 | 8.5 | Perform Validation Testing |  | 2w | 2020-02-20 | 2020-03-05 | 90 | 0d |  | Ben (Functional Lead); Ray (Faculty User) [50%]; Sue (Development Lead); Amy (Analyst); Ted (Lab User) [50%]; Hank (QA Analyst); Ike (Quality Assurance Lead); Ed (Developer); Fran (Developer) | 640h | 47,723.08 |
| 92 | 8.6 | Perform Acceptance Testing |  | 5w | 2020-03-05 | 2020-04-09 | 91 | 0d |  | Ben (Functional Lead) [50%]; Ray (Faculty User); Guy (Developer); Amy (Analyst); Ted (Lab User) [50%]; Hank (QA Analyst); Ike (Quality Assurance Lead); Ed (Developer); Sue (Development Lead) | 1600h | 120,836.54 |
| 93 | 8.7 | Quality Assurance completed | milestone | 0d | 2020-04-09 | 2020-04-09 | 77, 85, 92 | 0d |  |  |  |  |

| ID | WBS | Task | Type | Duration | Start | Finish | Predecessors | Total slack | Free slack | Resources | Work | Cost |
| --- | --- | --- | --- | --- | --- | --- | --- | --- | --- | --- | --- | --- |
| 94 | 9 | **Training** |  | 22d | 2020-03-17 | 2020-04-16 |  | 0.38d |  |  | 336h | 27,469.23 |
| 95 | 9.1 | **Identify Training Needs** |  | 7d | 2020-03-17 | 2020-03-26 |  | 0.38d | 0d |  | 96h | 7,703.85 |
| 96 | 9.1.1 | Identify Users |  | 2d | 2020-03-17 | 2020-03-19 | 76FS-2.5% | 0.38d | 0d | Lynn (Business Analysis Lead) | 16h | 1,115.38 |
| 97 | 9.1.2 | Identify System Features |  | 1w | 2020-03-19 | 2020-03-26 | 22, 96 | 0.38d |  | Lynn (Business Analysis Lead) | 40h | 2,788.46 |
| 98 | 9.1.3 | Identify Workflows |  | 1w | 2020-03-19 | 2020-03-26 | 1, 22, 96 | 0.38d | 0d | Kim (Analyst) | 40h | 3,800 |
| 99 | 9.1.4 | Training Needs sign off | milestone | 0d | 2020-03-26 | 2020-03-26 | 98 | 0.38d |  |  |  |  |
| 100 | 9.2 | Develop Training Documentation |  | 3w | 2020-03-26 | 2020-04-16 | 95 | 10.38d |  | Kim (Analyst) | 120h | 11,400 |
| 101 | 9.3 | Develop Training Exercises |  | 3w | 2020-03-26 | 2020-04-16 | 95 | 0.38d | 0d | Lynn (Business Analysis Lead) | 120h | 8,365.38 |
| 102 | 9.4 | Training completed | milestone | 0d | 2020-04-16 | 2020-04-16 | 101, 95 | 10.38d |  |  |  |  |
| 103 | 10 | **Implementation** |  | 16.5d | 2020-04-08 | 2020-04-30 |  | 0d |  |  | 1032h | 333,748.85 |
| 104 | 10.1 | User Training |  | 2w | 2020-04-16 | 2020-04-30 | 101 | 0.38d |  | Kim (Analyst); Banner Training [6000%] | 80h | 157,600 |
| 105 | 10.2 | Create Production Environment |  | 1d | 2020-04-08 | 2020-04-09 | 76FF | 11.5d | 0d | Mary (Infrastructure Lead) | 8h | 615.38 |
| 106 | 10.3 | Deploy Software to Production Environment |  | 1d | 2020-04-09 | 2020-04-10 | 105 | 14.5d |  | Ben (Functional Lead); Guy (Developer); Sue (Development Lead); Amy (Analyst); Hank (QA Analyst); Ike (Quality Assurance Lead); Ed (Developer); Fran (Developer); Banner Licenses [7000%] | 64h | 110,112.31 |
| 107 | 10.4 | **Convert Data from Existing System** |  | 3.5d | 2020-04-09 | 2020-04-14 |  | 0d |  |  | 152h | 11,281.15 |
| 108 | 10.4.1 | Data Extraction |  | 0.5d | 2020-04-09 | 2020-04-09 | 76 | 0d |  | Jon (Database Administrator); Lynn (Business Analysis Lead) | 8h | 578.85 |
| 109 | 10.4.2 | Data Translation / Transformation |  | 0.5d | 2020-04-09 | 2020-04-10 | 108 | 0d |  | Jon (Database Administrator); Lynn (Business Analysis Lead) | 8h | 578.85 |
| 110 | 10.4.3 | Data Loading |  | 0.5d | 2020-04-10 | 2020-04-10 | 109 | 0d |  | Jon (Database Administrator); Lynn (Business Analysis Lead) | 8h | 578.85 |
| 111 | 10.4.4 | Data Validation |  | 2d | 2020-04-10 | 2020-04-14 | 110 | 0d |  | Ben (Functional Lead); Ray (Faculty User) [50%]; Sue (Development Lead); Amy (Analyst); Ted (Lab User) [50%]; Hank (QA Analyst); Ike (Quality Assurance Lead); Ed (Developer); Fran (Developer) | 128h | 9,544.62 |
| 112 | 10.4.5 | Convert Data from Existing System completed | milestone | 0d | 2020-04-14 | 2020-04-14 | 111 | 0d |  |  |  |  |
| 113 | 10.5 | Implement System |  | 2d | 2020-04-14 | 2020-04-16 | 107 | 0d |  | Ben (Functional Lead); Guy (Developer); Sue (Development Lead); Amy (Analyst); Hank (QA Analyst); Ike (Quality Assurance Lead); Ed (Developer); Fran (Developer) | 128h | 10,224.62 |
| 114 | 10.6 | Complete User Acceptance |  | 1w | 2020-04-16 | 2020-04-23 | 113 | 0d |  | Ben (Functional Lead); Ray (Faculty User) [50%]; Amy (Analyst); Ted (Lab User) [50%]; Hank (QA Analyst); Ike (Quality Assurance Lead) | 200h | 13,488.46 |
| 115 | 10.7 | Post Project Review |  | 1w | 2020-04-23 | 2020-04-30 | 114 | 0d |  | Ben (Functional Lead); Sue (Development Lead); Amy (Analyst); Hank (QA Analyst); Ike (Quality Assurance Lead); Lynn (Business Analysis Lead); Ed (Developer); Fran (Developer); Jon (Database Administrator); Mary (Infrastructure Lead) | 400h | 30,426.92 |
| 116 | 10.8 | Implementation completed | milestone | 0d | 2020-04-30 | 2020-04-30 | 115, 107 | 0d |  |  |  |  |
